Schedule from GanttProject, 2024-10-14 to 2024-12-20, baseline: Projeto.
Holidays every year on 01-01, 04-21, 05-01, 09-07, 10-12, 11-02, 11-15, 12-25

## Calendars

- Project calendar: Mon-Sun working.

## Resources

| Resource | Group |
| --- | --- |
| Pedro | Scrum Master |
| Aymê | Líder de Projeto |
| Henrique | Gerente de processo |
| Victor | Analista de Qualidade |
| Matheus | Gerente de configuração |
| Breno | Design de jogo |
| Luiz | Desenvolvedor Sênior |
| Sabrina | Desenvolvedor Sênior |
| Dev. Junior | Desenvolvedor Júnior |

## Schedule

| ID | WBS | Task | Type | Duration | Start | Finish | Predecessors | Complete | Baseline start | Baseline finish | Baseline duration | Resources |
| --- | --- | --- | --- | --- | --- | --- | --- | --- | --- | --- | --- | --- |
| 1 | 1 | InícioSprint 00 | milestone | 0d | 2024-10-14 | 2024-10-14 |  |  |  |  |  |  |
| 2 | 2 | **Sprint 00** |  | 7d | 2024-10-14 | 2024-10-20 |  | 100% | 2024-10-14 | 2024-10-20 | 7d | Aymê |
| 3 | 2.1 | Refinamento de Caso de Uso e Diagrama de Classe |  | 5d | 2024-10-14 | 2024-10-18 |  | 100% | 2024-10-14 | 2024-10-18 | 5d | Pedro; Aymê; Henrique; Matheus |
| 4 | 2.2 | Avaliar o Refinamento |  | 1d | 2024-10-19 | 2024-10-19 | 3 | 100% | 2024-10-19 | 2024-10-19 | 1d | Henrique; Victor |
| 5 | 2.3 | Fazer Sprint Backlog (Sprint 01) |  | 6d | 2024-10-14 | 2024-10-19 |  | 100% | 2024-10-14 | 2024-10-19 | 6d | Pedro; Aymê; Henrique; Matheus |
| 6 | 2.4 | Avaliar Sprint Backlog |  | 1d | 2024-10-20 | 2024-10-20 | 5 | 100% | 2024-10-20 | 2024-10-20 | 1d | Victor |
| 7 | 2.5 | Desenvolver Protótipo de Tela |  | 4d | 2024-10-14 | 2024-10-17 |  | 100% | 2024-10-14 | 2024-10-17 | 4d | Breno |
| 8 | 2.6 | Avaliar Protótipo |  | 1d | 2024-10-18 | 2024-10-18 | 7 | 100% | 2024-10-18 | 2024-10-19 | 2d | Henrique; Victor |
| 9 | 2.7 | Concluir EPF |  | 6d | 2024-10-14 | 2024-10-19 |  | 100% | 2024-10-14 | 2024-10-19 | 6d | Henrique |
| 10 | 2.8 | Desenvolver Treinamento Github |  | 4d | 2024-10-14 | 2024-10-17 |  | 100% | 2024-10-14 | 2024-10-17 | 4d | Matheus |
| 11 | 2.9 | Configurar Repositorio |  | 4d | 2024-10-14 | 2024-10-17 |  | 100% | 2024-10-14 | 2024-10-19 | 6d | Matheus |
| 12 | 2.10 | Desenvolver Prova de Conceito |  | 6d | 2024-10-14 | 2024-10-19 |  | 100% | 2024-10-14 | 2024-10-19 | 6d | Victor; Breno; Luiz; Sabrina |
| 13 | 2.11 | Desenvolver Product Backlog |  | 5d | 2024-10-14 | 2024-10-18 |  | 100% | 2024-10-14 | 2024-10-19 | 6d | Pedro; Aymê; Henrique; Matheus |
| 14 | 2.12 | Planejar o Cronograma |  | 4d | 2024-10-14 | 2024-10-17 |  | 100% | 2024-10-14 | 2024-10-18 | 5d | Aymê |
| 15 | 2.13 | Desenvolver Padrões e Diretrizes |  | 4d | 2024-10-14 | 2024-10-17 |  | 100% | 2024-10-14 | 2024-10-17 | 4d | Victor |
| 16 | 2.14 | Desenvolver Plano de Garantia de Qualidade |  | 4d | 2024-10-14 | 2024-10-17 |  | 100% | 2024-10-14 | 2024-10-17 | 4d | Victor |
| 17 | 2.15 | Desenvolver Documentação de Utilização do Github |  | 3d | 2024-10-14 | 2024-10-16 |  | 100% | 2024-10-14 | 2024-10-17 | 4d | Matheus |
| 18 | 3 | TerminoSprint 00 | milestone | 0d | 2024-10-20 | 2024-10-20 |  |  |  |  |  |  |
| 19 | 4 | InícioSprint 01 | milestone | 0d | 2024-10-21 | 2024-10-21 |  |  |  |  |  |  |
| 20 | 5 | **Sprint 01** |  | 13d | 2024-10-21 | 2024-11-03 |  | 88% | 2024-10-21 | 2024-11-01 | 12d | Aymê |
| 21 | 5.1 | Definir Sprint Backlog (Sprint 02 ) |  | 2d | 2024-10-31 | 2024-11-01 |  | 100% | 2024-10-21 | 2024-10-26 | 6d | Pedro [1%]; Aymê [1%]; Henrique [1%]; Matheus [1%] |
| 22 | 5.2 | Concluir Visão do Projeto |  | 2d | 2024-10-21 | 2024-10-22 |  | 100% |  |  |  | Aymê |
| 23 | 5.3 | Configurar e subir Ambiente |  | 2d | 2024-10-21 | 2024-10-22 |  | 100% |  |  |  | Luiz; Sabrina |
| 24 | 5.4 | Avaliar Sprint Backlog ( Analista ) |  | 1d | 2024-11-03 | 2024-11-03 | 21 | 100% | 2024-10-27 | 2024-10-28 | 2d | Victor [1%] |
| 25 | 5.5 | Avaliar Sprint Backlog ( Dev. Sênior ) |  | 1d | 2024-11-03 | 2024-11-03 | 21 | 100% | 2024-10-27 | 2024-10-28 | 2d | Pedro; Luiz; Sabrina |
| 26 | 5.6 | Desenvolver Protótipo de Tela Login |  | 3d | 2024-10-21 | 2024-10-23 |  | 100% | 2024-10-21 | 2024-10-25 | 5d | Breno |
| 27 | 5.7 | Avaliar Protótipo |  | 2d | 2024-10-24 | 2024-10-25 | 26 | 100% | 2024-10-26 | 2024-10-27 | 2d | Henrique; Victor |
| 28 | 5.8 | Realizar WorkFlow da Sprint (02) |  | 1d | 2024-11-03 | 2024-11-03 | 24SS, 25SS | 100% | 2024-10-21 | 2024-10-26 | 6d | Aymê |
| 29 | 5.9 | Configurar API do banco de Dados |  | 11d | 2024-10-21 | 2024-10-31 |  | 80% |  |  |  | Luiz; Sabrina |
| 30 | 5.10 | Implementação da Validação de Nome |  | 5d | 2024-10-21 | 2024-10-25 |  | 100% |  |  |  | Luiz; Sabrina |
| 31 | 5.11 | Criação da Tela Inicial |  | 6d | 2024-10-21 | 2024-10-26 |  | 100% |  |  |  | Sabrina |
| 32 | 5.12 | Testes |  | 7d | 2024-10-26 | 2024-11-01 |  | 50% |  |  |  | Henrique; Victor |
| 33 | 5.13 | Implementar a contagem de commits por desenvolvedor |  | 3d | 2024-10-21 | 2024-10-23 |  | 100% |  |  |  | Matheus |
| 34 | 5.14 | Definir e Configurar Ambiente de Testes |  | 4d | 2024-10-21 | 2024-10-24 |  | 100% |  |  |  | Henrique; Victor |
| 35 | 6 | TerminoSprint 01 | milestone | 0d | 2024-11-03 | 2024-11-03 |  |  |  |  |  |  |
| 36 | 7 | InícioSprint 02 | milestone | 0d | 2024-11-04 | 2024-11-04 |  |  |  |  |  |  |

| ID | WBS | Task | Type | Duration | Start | Finish | Predecessors | Complete | Baseline start | Baseline finish | Baseline duration | Resources |
| --- | --- | --- | --- | --- | --- | --- | --- | --- | --- | --- | --- | --- |
| 37 | 8 | **Sprint 02** |  | 13d | 2024-11-04 | 2024-11-17 |  | 100% | 2024-11-04 | 2024-11-14 | 11d | Aymê |
| 38 | 8.1 | Definir Sprint Backlog (Sprint 03 ) |  | 1d | 2024-11-16 | 2024-11-16 |  | 100% | 2024-11-04 | 2024-11-08 | 5d | Pedro [1%]; Aymê [1%]; Henrique [1%]; Matheus [1%] |
| 39 | 8.2 | Criar Protótipo da Tela de Explicação, Refinar Tela da Fase e Desenvolver 12 Dispositivos |  | 10d | 2024-11-04 | 2024-11-13 |  | 100% | 2024-11-04 | 2024-11-08 | 5d | Breno |
| 40 | 8.3 | Avaliar Protótipo |  | 1d | 2024-11-14 | 2024-11-14 | 39 | 100% | 2024-11-09 | 2024-11-10 | 2d | Henrique; Victor |
| 41 | 8.4 | Programar Reunião de Início da Sprint com os Juniores |  | 1d | 2024-11-04 | 2024-11-04 |  | 100% | 2024-11-04 | 2024-11-04 | 1d | Pedro |
| 42 | 8.5 | Implementar Classes Aluno, Partida e Turma (Caso de Uso 02) |  | 4d | 2024-11-04 | 2024-11-07 |  | 100% | 2024-11-04 | 2024-11-06 | 3d | Dev. Junior |
| 43 | 8.6 | Seleção da Melhor Implementação das Classes pelos Desenvolvedores Juniores |  | 5d | 2024-11-08 | 2024-11-12 | 42 | 100% | 2024-11-07 | 2024-11-08 | 2d | Pedro; Luiz; Sabrina |
| 44 | 8.7 | Realizar Incremento com a Implementação Selecionada |  | 2d | 2024-11-13 | 2024-11-14 | 43 | 100% | 2024-11-10 | 2024-11-11 | 2d | Pedro; Luiz; Sabrina |
| 45 | 8.8 | Analisar Qualidade do Código da Sprint |  | 3d | 2024-11-12 | 2024-11-14 | 47, 48 | 100% | 2024-11-12 | 2024-11-14 | 3d | Henrique; Victor |
| 46 | 8.9 | Realizar WorkFlow da Sprint (03) |  | 2d | 2024-11-16 | 2024-11-17 |  | 100% | 2024-11-04 | 2024-11-09 | 6d | Aymê |
| 47 | 8.10 | Criar Tela da Fase 1 |  | 8d | 2024-11-04 | 2024-11-11 |  | 100% |  |  |  | Sabrina |
| 48 | 8.11 | Criar Tela de Explicação da Fase 1 |  | 8d | 2024-11-04 | 2024-11-11 |  | 100% |  |  |  | Sabrina |
| 49 | 8.12 | Refinar Padrão de Projeto para Acesso ao Banco de Dados |  | 12d | 2024-11-04 | 2024-11-16 |  | 100% |  |  |  | Luiz |
| 50 | 9 | TerminoSprint 02 | milestone | 0d | 2024-11-17 | 2024-11-17 |  |  |  |  |  |  |
| 51 | 10 | InícioSprint 03 | milestone | 0d | 2024-11-18 | 2024-11-18 |  |  |  |  |  |  |
| 52 | 11 | **Sprint 03** |  | 14d | 2024-11-17 | 2024-11-30 |  |  | 2024-11-18 | 2024-11-29 | 12d | Aymê |
| 53 | 11.1 | Definir Sprint Backlog (Sprint 04 ) |  | 2d | 2024-11-29 | 2024-11-30 |  |  | 2024-11-18 | 2024-11-23 | 6d | Pedro [1%]; Aymê [1%]; Henrique [1%]; Matheus [1%] |
| 54 | 11.2 | Terminar a Fase 3 do Jogo |  | 5d | 2024-11-18 | 2024-11-22 |  |  |  |  |  | Sabrina |
| 55 | 11.3 | Adicionar Tela de Dicas nas Fases 1 e 2 |  | 5d | 2024-11-18 | 2024-11-22 |  |  |  |  |  | Sabrina |
| 56 | 11.4 | Especificar Classes e Funcionalidades da Sprint 03 para os Juniores |  | 2d | 2024-11-17 | 2024-11-18 |  |  |  |  |  | Pedro |
| 57 | 11.5 | Especificar Banco de Dados Relacional |  | 2d | 2024-11-17 | 2024-11-18 |  |  |  |  |  | Luiz |
| 58 | 11.6 | Realizar Testes Funcionais das Funcionalidades da Sprint |  | 5d | 2024-11-25 | 2024-11-29 |  |  |  |  |  | Victor |
| 59 | 11.7 | Analisar Qualidade do Código da Sprint |  | 5d | 2024-11-25 | 2024-11-29 |  |  |  |  |  | Victor |
| 60 | 11.8 | Ajustar a Música do Jogo |  | 7d | 2024-11-18 | 2024-11-24 |  |  |  |  |  | Breno |
| 61 | 11.9 | Desenhar 12 Novos Dispositivos Computacionais |  | 9d | 2024-11-18 | 2024-11-26 |  |  | 2024-11-18 | 2024-11-22 | 5d | Breno |
| 62 | 11.10 | Apresentar Sprint Backlog para os Juniores |  | 1d | 2024-11-18 | 2024-11-18 |  |  | 2024-11-18 | 2024-11-18 | 1d | Pedro |
| 63 | 11.11 | Implementar Classes da Sprint (Caso de Uso 03) |  | 4d | 2024-11-18 | 2024-11-21 |  |  | 2024-11-18 | 2024-11-20 | 3d | Dev. Junior |
| 64 | 11.12 | Implementar o Diagrama Relacional no MySQL |  | 4d | 2024-11-18 | 2024-11-21 |  |  |  |  |  | Dev. Junior |
| 65 | 11.13 | Transformar o Diagrama ER em Relacional |  | 3d | 2024-11-18 | 2024-11-20 |  |  |  |  |  | Dev. Junior |
| 66 | 11.14 | Seleção da Melhor Implementação das Classes pelos Desenvolvedores Juniores |  | 2d | 2024-11-22 | 2024-11-23 | 63 |  | 2024-11-21 | 2024-11-22 | 2d | Pedro; Luiz; Sabrina |
| 67 | 11.15 | Realizar o incremento |  | 2d | 2024-11-22 | 2024-11-23 | 63 |  | 2024-11-25 | 2024-11-26 | 2d | Pedro; Luiz; Sabrina |
| 68 | 11.16 | Gerenciar/Atualizar Processo |  | 10d | 2024-11-18 | 2024-11-27 |  |  |  |  |  | Henrique |
| 69 | 11.17 | Atualizar cronogrma da Sprint (04) |  | 2d | 2024-11-29 | 2024-11-30 |  |  | 2024-11-18 | 2024-11-23 | 6d | Aymê |
| 70 | 12 | TerminoSprint 03 | milestone | 0d | 2024-12-01 | 2024-12-01 |  |  |  |  |  |  |
| 71 | 13 | InícioSprint 04 | milestone | 0d | 2024-12-02 | 2024-12-02 |  |  |  |  |  |  |

| ID | WBS | Task | Type | Duration | Start | Finish | Predecessors | Baseline start | Baseline finish | Baseline duration | Resources |
| --- | --- | --- | --- | --- | --- | --- | --- | --- | --- | --- | --- |
| 72 | 14 | **Sprint 04** |  | 12d | 2024-12-02 | 2024-12-13 |  | 2024-12-02 | 2024-12-13 | 12d | Aymê |
| 73 | 14.1 | Definir Sprint Backlog (Sprint 05 ) |  | 4d | 2024-12-02 | 2024-12-05 |  | 2024-12-02 | 2024-12-05 | 4d | Pedro [1%]; Aymê [1%]; Henrique [1%]; Matheus [1%] |
| 74 | 14.2 | Avaliar Sprint Backlog |  | 2d | 2024-12-06 | 2024-12-07 | 73 | 2024-12-06 | 2024-12-07 | 2d | Victor |
| 75 | 14.3 | Desenvolver Protótipo de Tela |  | 5d | 2024-12-02 | 2024-12-06 |  | 2024-12-02 | 2024-12-06 | 5d | Breno |
| 76 | 14.4 | Avaliar Protótipo |  | 2d | 2024-12-07 | 2024-12-08 | 75 | 2024-12-07 | 2024-12-08 | 2d | Henrique; Victor |
| 77 | 14.5 | Apresentar Sprint Backlog para os Juniores |  | 1d | 2024-12-02 | 2024-12-02 |  | 2024-12-02 | 2024-12-02 | 1d | Pedro |
| 78 | 14.6 | CóDesenvolvimento das Classes, Metodos e Banco de Dados |  | 3d | 2024-12-02 | 2024-12-04 |  | 2024-12-02 | 2024-12-04 | 3d | Dev. Junior |
| 79 | 14.7 | Escolher melhor classe |  | 2d | 2024-12-05 | 2024-12-06 | 78 | 2024-12-05 | 2024-12-06 | 2d | Pedro; Luiz; Sabrina |
| 80 | 14.8 | Avaliar codificação das classes e banco de dados |  | 2d | 2024-12-07 | 2024-12-08 | 79 | 2024-12-07 | 2024-12-08 | 2d | Henrique; Victor |
| 81 | 14.9 | Realizar o incremento |  | 2d | 2024-12-09 | 2024-12-10 | 80 | 2024-12-09 | 2024-12-10 | 2d | Pedro; Luiz; Sabrina |
| 82 | 14.10 | Avaliar o incremento e realizar testes |  | 3d | 2024-12-11 | 2024-12-13 | 81 | 2024-12-11 | 2024-12-13 | 3d | Henrique; Victor |
| 83 | 14.11 | Realizar WorkFlow da Sprint (05) |  | 5d | 2024-12-02 | 2024-12-06 |  | 2024-12-02 | 2024-12-06 | 5d | Aymê |
| 84 | 15 | TerminoSprint 04 | milestone | 0d | 2024-12-15 | 2024-12-15 |  |  |  |  |  |
| 85 | 16 | InícioSprint 05 | milestone | 0d | 2024-12-16 | 2024-12-16 |  |  |  |  |  |
| 86 | 17 | **Sprint 05** |  | 4d | 2024-12-16 | 2024-12-19 |  | 2024-12-16 | 2024-12-19 | 4d | Aymê |
| 87 | 17.1 | Realizar Refinamento e Finalização |  | 4d | 2024-12-16 | 2024-12-19 |  | 2024-12-16 | 2024-12-19 | 4d | Pedro; Aymê; Henrique; Victor; Matheus; Breno; Sabrina |
| 88 | 18 | TerminoSprint 05 | milestone | 0d | 2024-12-20 | 2024-12-20 |  |  |  |  |  |
